# ProjectRoadmate

Schedule from MS Project, 2008-07-22 to 2008-10-24, status date 2008-09-30, A marks actual dates.
alldatime

## Calendars

- Standard: Mon-Fri 08:00-12:00, 13:00-17:00; Sat-Sun off. Exceptions (off unless hours are given): 2008-08-25 to 2008-09-07.

## Resources

| Resource |
| --- |
| Amir Bashir |
| Carlos Crasborn |
| Dale Halliwell |
| Lucia Stewart |
| Scott Richards |
| Yizhang Yin |

## Schedule

| ID | WBS | Task | Type | Duration | Start | Finish | Predecessors | Complete | Remaining | Baseline start | Baseline finish | Baseline duration | Total slack | Free slack | Constraint | Deadline | Resources | Work | Actual work |
| --- | --- | --- | --- | --- | --- | --- | --- | --- | --- | --- | --- | --- | --- | --- | --- | --- | --- | --- | --- |
| 1 | 1 | **Prototype1** |  | 15d | 2008-07-22 A | 2008-08-12 |  | 99% | 0.05d | 2008-07-22 | 2008-08-12 | 15d | 44d |  |  |  |  | 286.4h | 286.4h |
| 2 | 1.1 | **Initial Analysis** |  | 6d | 2008-07-22 A | 2008-07-29 A |  | 100% |  | 2008-07-22 | 2008-07-29 | 6d |  |  |  |  |  | 118.4h | 118.4h |
| 3 | 1.1.1 | Scope for Prorotype1 |  | 1d | 2008-07-22 A | 2008-07-22 A |  | 100% |  | 2008-07-22 | 2008-07-22 | 1d |  |  | start no earlier than 2008-07-22 |  | Amir Bashir [50%]; Carlos Crasborn [50%]; Dale Halliwell [50%]; Lucia Stewart [50%]; Scott Richards [50%]; Yizhang Yin [50%] | 24h | 24h |
| 4 | 1.1.2 | Project Name |  | 0.2d | 2008-07-22 A | 2008-07-22 A |  | 100% |  | 2008-07-22 | 2008-07-22 | 0.2d |  |  |  |  | Amir Bashir [25%]; Carlos Crasborn [25%]; Dale Halliwell [25%]; Lucia Stewart [25%]; Scott Richards [25%]; Yizhang Yin [25%] | 2.4h | 2.4h |
| 5 | 1.1.3 | Create Google Account |  | 0.2d | 2008-07-22 A | 2008-07-22 A |  | 100% |  | 2008-07-22 | 2008-07-22 | 0.2d |  |  |  |  | Amir Bashir [125%]; Carlos Crasborn [125%]; Dale Halliwell [125%]; Lucia Stewart [125%]; Scott Richards [125%]; Yizhang Yin [125%] | 12h | 12h |
| 6 | 1.1.4 | Use Cases |  | 1w | 2008-07-23 A | 2008-07-29 A | 5 | 100% |  | 2008-07-23 | 2008-07-29 | 1w |  |  |  |  | Lucia Stewart [80%]; Dale Halliwell [20%]; Yizhang Yin [20%] | 24h | 24h |
| 7 | 1.1.5 | Domain Model |  | 1w | 2008-07-23 A | 2008-07-29 A |  | 100% |  | 2008-07-23 | 2008-07-29 | 1w |  |  | start no earlier than 2008-07-23 |  | Dale Halliwell [80%] | 32h | 32h |
| 8 | 1.1.6 | RMMM |  | 3d | 2008-07-23 A | 2008-07-25 A |  | 100% |  | 2008-07-23 | 2008-07-25 | 3d |  |  | start no earlier than 2008-07-23 |  | Amir Bashir | 24h | 24h |
| 9 | 1.2 | **Design of Prototype1** |  | 6d | 2008-07-30 A | 2008-08-06 A | 2 | 100% |  | 2008-07-30 | 2008-08-06 | 6d |  |  |  |  |  | 168h | 168h |
| 10 | 1.2.1 | Main page |  | 2d | 2008-07-30 A | 2008-07-31 A | 2 | 100% |  | 2008-07-30 | 2008-07-31 | 2d |  |  |  |  | Amir Bashir | 16h | 16h |
| 11 | 1.2.2 | Base Template page |  | 3d | 2008-08-01 A | 2008-08-05 A | 10 | 100% |  | 2008-08-01 | 2008-08-05 | 3d |  |  |  |  | Amir Bashir | 24h | 24h |
| 12 | 1.2.3 | Create Ride Offer page |  | 2d | 2008-07-30 A | 2008-07-31 A | 2 | 100% |  | 2008-07-30 | 2008-07-31 | 2d |  |  |  |  | Carlos Crasborn | 16h | 16h |
| 13 | 1.2.4 | Edit Ride Offer page |  | 2d | 2008-08-01 A | 2008-08-04 A | 12 | 100% |  | 2008-08-01 | 2008-08-04 | 2d |  |  |  |  | Carlos Crasborn | 16h | 16h |
| 14 | 1.2.5 | Search Ride Offers page |  | 2d | 2008-08-05 A | 2008-08-06 A | 13 | 100% |  | 2008-08-05 | 2008-08-06 | 2d |  |  |  |  | Carlos Crasborn | 16h | 16h |
| 15 | 1.2.6 | View Ride Offer page |  | 2d | 2008-07-30 A | 2008-07-31 A | 2 | 100% |  | 2008-07-30 | 2008-07-31 | 2d |  |  |  |  | Dale Halliwell | 16h | 16h |
| 16 | 1.2.7 | About page |  | 2d | 2008-08-01 A | 2008-08-04 A | 15 | 100% |  | 2008-08-01 | 2008-08-04 | 2d |  |  |  |  | Dale Halliwell; Yizhang Yin | 32h | 32h |
| 17 | 1.2.8 | Support page |  | 2d | 2008-08-05 A | 2008-08-06 A | 16 | 100% |  | 2008-08-05 | 2008-08-06 | 2d |  |  |  |  | Dale Halliwell; Yizhang Yin | 32h | 32h |
| 18 | 1.3 | Testing phase1 |  | 0.5w | 2008-08-07 A | 2008-08-11 | 17 | 95% | 0.03w | 2008-08-07 | 2008-08-11 | 0.5w | 44.5d |  |  |  |  |  |  |
| 19 | 1.4 | Report1 |  | 1w | 2008-08-04 A | 2008-08-08 A |  | 100% |  | 2008-08-04 | 2008-08-08 | 1w |  |  | finish no earlier than 2008-08-08 | 2008-08-08 |  |  |  |
| 20 | 1.5 | Prototype1 Presentation | milestone | 0d | 2008-08-12 | 2008-08-12 |  |  |  | 2008-08-12 | 2008-08-12 | 0d | 1d | 0d | start no earlier than 2008-08-12 |  |  |  |  |
| 21 | 2 | Get Familiar with Python and Google API Engine |  | 16d? | 2008-07-22 A | 2008-08-12 A |  | 100% |  | 2008-07-22 | 2008-08-12 | 16d? |  |  | finish no earlier than 2008-08-12 |  |  |  |  |
| 22 | 3 | **Prototype2** |  | 20d? | 2008-08-13 A | 2008-09-23 | 20 | 97% | 0.67d? | 2008-08-13 | 2008-09-23 | 19.5d | 23d |  |  |  |  | 708.7h | 685.66h |
| 23 | 3.1 | **Scope of Prototype2** |  | 7d? | 2008-08-13 A | 2008-08-21 A | 21 | 100% |  | 2008-08-13 | 2008-08-14 | 2d |  |  |  |  |  | 56h | 56h |
| 24 | 3.1.1 | Entity Relationship Diagram |  | 1d? | 2008-08-13 A | 2008-08-13 A |  | 100% |  |  |  |  |  |  |  |  | Dale Halliwell | 8h | 8h |
| 25 | 3.1.2 | Use Cases - Prototype 2 (issue 18, 19) |  | 6d? | 2008-08-14 A | 2008-08-21 A | 24 | 100% |  |  |  |  |  |  |  |  | Lucia Stewart | 48h | 48h |

| ID | WBS | Task | Type | Duration | Start | Finish | Predecessors | Complete | Remaining | Baseline start | Baseline finish | Baseline duration | Total slack | Free slack | Constraint | Deadline | Resources | Work | Actual work |
| --- | --- | --- | --- | --- | --- | --- | --- | --- | --- | --- | --- | --- | --- | --- | --- | --- | --- | --- | --- |
| 26 | 3.2 | **Design of Prototype2** |  | 12d? | 2008-09-08 A | 2008-09-23 |  | 92% | 0.96d? | 2008-08-15 | 2008-09-16 | 2.5w | 23d |  |  |  |  | 444.8h | 421.76h |
| 27 | 3.2.1 | **login/registration/user management functionality** |  | 12d? | 2008-09-08 A | 2008-09-23 |  | 84% | 1.92d? |  |  |  | 23d |  |  |  | Carlos Crasborn | 172.8h | 149.76h |
| 28 | 3.2.1.1 | OpenID Login (issue 15) |  | 12d? | 2008-09-08 A | 2008-09-23 |  | 84% | 1.92d? |  |  |  | 23d |  | finish no earlier than 2008-09-23 |  | Carlos Crasborn | 76.8h | 69.12h |
| 29 | 3.2.2 | **Interface and presentation design; profile & rides** |  | 3d? | 2008-09-19 A | 2008-09-23 A |  | 100% |  |  |  |  |  |  |  |  | Amir Bashir; Lucia Stewart | 80h | 80h |
| 30 | 3.2.2.1 | Add google Maps to View Ride Offer (issue 20) |  | 2d? | 2008-09-19 A | 2008-09-22 A |  | 100% |  |  |  |  |  |  | finish no earlier than 2008-09-22 |  | Amir Bashir | 16h | 16h |
| 31 | 3.2.2.2 | Update instructions on Support page |  | 2d? | 2008-09-22 A | 2008-09-23 A |  | 100% |  |  |  |  |  |  | start no earlier than 2008-09-22 |  | Lucia Stewart | 16h | 16h |
| 32 | 3.2.3 | **Accept Ride and Location; updated model this week** |  | 8d? | 2008-09-12 A | 2008-09-23 A |  | 100% |  |  |  |  |  |  |  |  | Dale Halliwell; Lucia Stewart | 192h | 192h |
| 33 | 3.2.3.1 | Update Create Ride Offer to Prototype 2 specification (issue 28) |  | 8d? | 2008-09-12 A | 2008-09-23 A |  | 100% |  |  |  |  |  |  | finish no earlier than 2008-09-23 |  | Dale Halliwell | 64h | 64h |
| 34 | 3.3 | **Testing phase2** |  | 17d? | 2008-08-15 A | 2008-09-22 A |  | 100% |  | 2008-09-16 | 2008-09-23 | 1w |  |  |  |  |  | 136h | 136h |
| 35 | 3.3.1 | Explore unit testing with Selenium |  | 3d? | 2008-08-15 A | 2008-08-19 A |  | 100% |  |  |  |  |  |  | start no earlier than 2008-08-15 |  | Yizhang Yin | 24h | 24h |
| 36 | 3.3.2 | testing |  | 14d? | 2008-08-20 A | 2008-09-22 A | 35 | 100% |  |  |  |  |  |  |  |  | Yizhang Yin | 112h | 112h |
| 37 | 3.4 | **Documentation** |  | 5d? | 2008-09-15 A | 2008-09-19 A |  | 100% |  |  |  |  |  |  |  |  |  | 71.9h | 71.9h |
| 38 | 3.4.1 | Report2 (issue 23) |  | 1w | 2008-09-15 A | 2008-09-19 A |  | 100% |  | 2008-09-15 | 2008-09-19 | 1w |  |  | finish no earlier than 2008-09-19 | 2008-09-19 | Carlos Crasborn | 39.9h | 39.9h |
| 39 | 3.4.2 | Wiki page: How to deploy RM (issue 16) |  | 1d? | 2008-09-16 A | 2008-09-16 A |  | 100% |  |  |  |  |  |  | start no earlier than 2008-09-16 |  | Carlos Crasborn | 8h | 8h |
| 40 | 3.4.3 | Wiki page: How to run RM (issue 17) |  | 3d? | 2008-09-16 A | 2008-09-18 A |  | 100% |  |  |  |  |  |  | finish no earlier than 2008-09-18 |  | Carlos Crasborn | 24h | 24h |
| 41 | 3.5 | Prototype2 Presentation | milestone | 0d | 2008-09-23 | 2008-09-23 |  |  |  | 2008-09-23 | 2008-09-23 | 0d | 3d |  | start no earlier than 2008-09-23 |  | Amir Bashir; Carlos Crasborn; Dale Halliwell; Lucia Stewart; Yizhang Yin |  |  |
| 42 | 4 | **Final Product** |  | 20d? | 2008-09-23 A | 2008-10-21 | 41 | 16% | 16.8d? | 2008-09-23 | 2008-10-21 | 20d | 4d |  |  |  |  |  |  |
| 43 | 4.1 | Scope of Final version |  | 2d | 2008-09-26 A | 2008-09-29 | 41 | 60% | 0.8d | 2008-09-23 | 2008-09-24 | 2d | 6d | 0d | finish no earlier than 2008-09-29 |  |  |  |  |
| 44 | 4.2 | Design of Final version |  | 2w | 2008-09-30 A | 2008-10-13 | 43 | 20% | 1.6w | 2008-09-26 | 2008-10-09 | 2w | 4d | 0d | finish no earlier than 2008-10-09 |  |  |  |  |
| 45 | 4.3 | Search via Google Maps wth Timeframe filters |  | 1d? | 2008-10-14 | 2008-10-14 | 44 |  |  |  |  |  | 4d | 0d |  |  |  |  |  |
| 46 | 4.4 | Auto-completition of Address Fields |  | 1d? | 2008-10-15 | 2008-10-15 | 45 |  |  |  |  |  | 4d | 0d |  |  |  |  |  |
| 47 | 4.5 | Google Calendar Integration |  | 1d? | 2008-10-16 | 2008-10-16 | 46 |  |  |  |  |  | 4d | 0d |  |  |  |  |  |
| 48 | 4.6 | Multi-Stops Rides |  | 1d? | 2008-10-17 | 2008-10-17 | 47 |  |  |  |  |  | 4d | 0d |  |  |  |  |  |
| 51 | 4.7 | **Testing Final Phase** |  | 1d? | 2008-10-20 | 2008-10-20 | 48 |  |  | 2008-10-10 | 2008-10-16 | 1w | 4d |  |  |  |  |  |  |
| 52 | 4.7.1 | Selenium |  | 1d? | 2008-10-20 | 2008-10-20 |  |  |  |  |  |  | 4d |  |  |  |  |  |  |
| 53 | 4.7.2 | Silverback |  | 1d? | 2008-10-20 | 2008-10-20 |  |  |  |  |  |  | 4d |  |  |  |  |  |  |

| ID | WBS | Task | Type | Duration | Start | Finish | Baseline start | Baseline finish | Baseline duration | Total slack | Constraint | Deadline |
| --- | --- | --- | --- | --- | --- | --- | --- | --- | --- | --- | --- | --- |
| 54 | 4.8 | **Final Documentation** |  | 1d? | 2008-09-23 | 2008-09-23 | 2008-10-13 | 2008-10-17 | 1w | 18d |  | 2008-10-17 |
| 55 | 4.8.1 | End User Manual |  | 1d? | 2008-09-23 | 2008-09-23 |  |  |  | 18d |  |  |
| 56 | 4.8.2 | Installation administration manual |  | 1d? | 2008-09-23 | 2008-09-23 |  |  |  | 18d |  |  |
| 57 | 4.9 | Presentation & Demonstration | milestone | 0d | 2008-10-21 | 2008-10-21 | 2008-10-21 | 2008-10-21 | 0d | 4d | start no earlier than 2008-10-21 |  |
| 58 | 5 | Reflection Essay |  | 4d? | 2008-10-21 | 2008-10-24 | 2008-10-21 | 2008-10-24 | 4d? | 0d | finish no earlier than 2008-10-24 |  |
